# Task5

Schedule from MS Project, 2022-03-01 to 2022-08-01, status date 2022-04-22, costs in ₽, A marks actual dates.
HP
Карта города на основе модуля отображения. 6 месяцев. 50 000 руб.

## Calendars

- Стандартный: Mon-Fri 09:00-13:00, 14:00-18:00; Sat-Sun off. Exceptions (off unless hours are given): 2022-03-07 to 2022-03-08 (8 Марта), 2022-05-02 to 2022-05-03 (День Труда), 2022-05-09 to 2022-05-10 (День Победы), 2022-06-13 (День России).

## Resources

| Resource | Group | Rate | Cost per use |
| --- | --- | --- | --- |
| Ведущий программист | Программирование | 10 | 100 |
| Программист#1 | Программирование | 7 | 50 |
| Программист#2 | Программирование | 7 | 50 |
| Программист#3 | Программирование | 7 | 50 |
| Программист#4 | Программирование | 7 | 50 |
| Системный аналитик | Анализ | 20 | 300 |
| Художник-дизайнер | Дизайн | 8 | 70 |
| Технический писатель | Документация | 5 | 20 |
| Web-дизайнер | Internet | 7 | 50 |
| 3D аниматор | Дизайн | 8 | 70 |
| Мультимедиа-корреспондент | М-медиа | 3 | 20 |
| Наборщик данных#1 | Ввод данных | 2 | 10 |
| Наборщик данных#2 | Ввод данных | 2 | 10 |
| Наборщик данных#3 | Ввод данных | 2 | 10 |
| Наборщик данных#4 | Ввод данных | 2 | 10 |
| Наборщик данных#5 | Ввод данных | 2 | 10 |
| Дополнительный сервер | Дополнительный | 2 |  |

## Schedule

| ID | WBS | Task | Type | Duration | Start | Finish | Predecessors | Complete | Remaining | Baseline start | Baseline finish | Baseline duration | Total slack | Free slack | Resources | Work | Actual work | Cost | Baseline cost | Actual cost |
| --- | --- | --- | --- | --- | --- | --- | --- | --- | --- | --- | --- | --- | --- | --- | --- | --- | --- | --- | --- | --- |
| 1 | 1 | Начало проекта | milestone | 0w | 2022-03-01 09:00 A | 2022-03-01 09:00 A |  | 100% |  | 2022-03-01 09:00 | 2022-03-01 09:00 | 0w |  |  |  |  |  |  |  |  |
| 2 | 2 | **Проектирование** |  | 33.12d | 2022-03-01 09:00 A | 2022-04-19 09:59 |  | 79% | 7.09d |  |  |  | 62.88d |  |  | 1268h | 1100h | 13,588 |  | 11,982 |
| 3 | 2.1 | **Построение базы объектов** |  | 27.12d | 2022-03-01 09:00 A | 2022-04-11 10:00 A |  | 100% |  | 2022-03-24 14:00 | 2022-07-28 15:00 | 85.12d |  |  | Дополнительный сервер | 1100h | 1100h | 11,982 | 15,580 | 11,982 |
| 4 | 2.1.1 | Анализ и построение структуры базы объектов |  | 2w | 2022-03-24 14:00 A | 2022-04-07 15:00 A |  | 100% |  | 2022-03-24 14:00 | 2022-04-07 15:00 | 2w |  |  | Системный аналитик | 80h | 80h | 1,900 | 1,900 | 1,900 |
| 5 | 2.1.2 | Анализ и проектирование ядра |  | 3.05w | 2022-03-01 09:00 A | 2022-03-24 12:00 A |  | 100% |  | 2022-03-01 09:00 | 2022-03-24 12:00 | 3.05w |  |  | Ведущий программист; Системный аналитик | 240h | 240h | 4,000 | 4,000 | 4,000 |
| 6 | 2.1.3 | **Разработка дизайна интерфейса** |  | 27.12d | 2022-03-01 09:00 A | 2022-04-11 10:00 A |  | 100% |  | 2022-03-01 09:00 | 2022-04-07 15:00 | 25.62d |  |  |  | 352h | 352h | 4,226 | 2,770 | 4,226 |
| 7 | 2.1.3.1 | Разработка 2D графических элементов |  | 4.12w | 2022-03-01 09:00 A | 2022-03-31 18:00 A |  | 100% |  | 2022-03-01 09:00 | 2022-03-24 12:00 | 3w |  |  | Художник-дизайнер | 132h | 132h | 1,126 | 1,030 | 1,126 |
| 8 | 2.1.3.2 | Разработка 3D графических элементов |  | 2.2w | 2022-03-01 09:00 A | 2022-03-18 11:00 A | 7SS | 100% |  | 2022-03-01 09:00 | 2022-03-17 11:00 | 2w |  |  | 3D аниматор | 88h | 88h | 774 | 710 | 774 |
| 9 | 2.1.3.3 | Создание заставки |  | 3.3w | 2022-03-17 12:00 A | 2022-04-11 10:00 A | 8 | 100% |  | 2022-03-17 12:00 | 2022-04-07 15:00 | 3w |  |  | 3D аниматор | 132h | 132h | 1,126 | 1,030 | 1,126 |
| 10 | 2.2 | Разработка дизайна руководства |  | 1w | 2022-04-04 09:00 | 2022-04-19 09:59 |  |  |  | 2022-06-14 14:33 | 2022-06-21 14:33 | 1w | 62.88d | 52.57d | Художник-дизайнер | 40h |  | 390 | 390 |  |
| 11 | 2.3 | **Создание web-сайта и поддержка** |  | 30.62d | 2022-03-01 09:00 | 2022-04-14 15:00 |  |  |  | 2022-06-16 14:33 | 2022-07-19 14:07 | 22.95d | 1d | 0d |  | 128h |  | 1,216 | 2,106 |  |
| 12 | 2.3.1 | Разработка структуры сайта |  | 1d | 2022-03-01 09:00 | 2022-03-01 18:00 |  |  |  | 2022-06-16 14:33 | 2022-06-17 14:33 | 1d | 1d | 0d | Web-дизайнер | 8h |  | 106 | 106 |  |
| 13 | 2.3.2 | Разработка дизайна сайта |  | 2.8w | 2022-03-02 10:00 | 2022-04-14 15:00 | 12 |  |  | 2022-06-17 14:33 | 2022-06-28 11:07 | 1.34w | 1d |  | 3D аниматор; Web-дизайнер; Художник-дизайнер | 120h |  | 1,110 | 1,110 |  |
| 14 | 3 | **Программирование** |  | 71.19d | 2022-03-24 12:00 A | 2022-07-08 14:33 |  | 21% | 56.54d |  |  |  | -0.3d | 0d |  | 1840h | 323.96h | 16,789.56 |  | 3,015.64 |
| 15 | 3.1 | Программирование средств обработки базы объектов | milestone | 0w | 2022-04-07 15:00 | 2022-04-07 15:00 | 4 |  |  | 2022-04-07 15:00 | 2022-04-28 15:00 | 3w | 16.62d | 0d | Программист#3; Программист#4 |  |  | 100 | 1,780 |  |
| 16 | 3.2 | **Создание ядра GIS** |  | 63.69d | 2022-03-24 12:00 A | 2022-06-29 09:33 |  | 23% | 48.91d | 2022-03-01 09:00 | 2022-06-17 09:33 | 71.07d | -0.3d | 0d |  | 1600h | 323.96h | 13,809.56 | 18,139.56 | 3,015.64 |
| 17 | 3.2.1 | Создание модели ядра |  | 3.41w | 2022-03-24 12:00 A | 2022-04-18 12:13 | 5 | 80% | 0.68w | 2022-03-24 12:00 | 2022-04-18 12:13 | 3.41w | 4.6d | 0d | Ведущий программист; Программист#1; Программист#2 | 400h | 323.96h | 3,396.7 | 3,396.7 | 2,785.64 |
| 18 | 3.2.2 | Создание рабочей версии ядра |  | 8.33w | 2022-04-25 12:13 | 2022-06-29 09:33 | 26 |  |  | 2022-04-25 12:13 | 2022-06-17 09:33 | 6.73w | -0.3d | 0d | Ведущий программист; Программист#1; Программист#2; Программист#3; Программист#4 | 1200h |  | 9,412.87 | 9,412.87 |  |
| 19 | 3.3 | **Создание интерфейса** |  | 7.5d | 2022-06-29 09:33 | 2022-07-08 14:33 | 1 |  |  | 2022-03-01 09:00 | 2022-06-28 14:33 | 78.57d | -0.3d | 0d |  | 240h |  | 2,880 | 5,650 |  |
| 20 | 3.3.1 | Программирование интерфейса |  | 1.5w | 2022-06-29 09:33 | 2022-07-08 14:33 | 6, 16 |  |  | 2022-06-17 09:33 | 2022-06-28 14:33 | 1.5w | -0.3d | 0d | Программист#3; Программист#4; Программист#1; Программист#2 | 240h |  | 1,880 | 1,880 |  |
| 21 | 4 | **Наполнение** |  | 63.85d | 2022-04-01 16:13 A | 2022-07-07 15:00 |  | 11% | 57.08d |  |  |  | 16.62d |  |  | 2760h | 89h | 6,480 |  | 287 |
| 22 | 4.1 | Наполнение базы объектов |  | 12w | 2022-04-07 15:00 | 2022-07-07 15:00 | 15 |  |  | 2022-04-28 15:00 | 2022-07-28 15:00 | 12w | 16.62d |  | Наборщик данных#1; Наборщик данных#2; Наборщик данных#3; Наборщик данных#4; Наборщик данных#5 | 2400h |  | 4,850 | 4,850 |  |
| 23 | 4.2 | Создание мультемедиа-наполнения |  | 6w | 2022-04-07 15:00 A | 2022-05-26 12:00 | 6 | 37% | 3.77w | 2022-04-07 15:00 | 2022-05-26 12:00 | 6w | 45.88d |  | Мультимедиа-корреспондент | 240h | 89h | 740 | 740 | 287 |
| 24 | 4.3 | Наполнение сайта |  | 3w | 2022-04-01 16:13 | 2022-04-25 12:13 | 26FF |  |  | 2022-06-28 11:07 | 2022-07-19 14:07 | 3w | 64.85d |  | Web-дизайнер | 120h |  | 890 | 890 |  |

| ID | WBS | Task | Type | Duration | Start | Finish | Predecessors | Complete | Remaining | Baseline start | Baseline finish | Baseline duration | Total slack | Constraint | Resources | Work | Actual work | Cost | Baseline cost | Actual cost |
| --- | --- | --- | --- | --- | --- | --- | --- | --- | --- | --- | --- | --- | --- | --- | --- | --- | --- | --- | --- | --- |
| 25 | 5 | **Тестирование** |  | 68.84d | 2022-04-18 12:13 A | 2022-07-29 10:58 |  | 10% | 61.77d |  |  |  | 1d |  |  | 520h | 36.77h | 4,275.85 |  | 307.38 |
| 26 | 5.1 | Тестирование модели ядра |  | 1w | 2022-04-18 12:13 A | 2022-04-25 12:13 | 17 | 92% | 0.08w | 2022-04-18 12:13 | 2022-04-25 12:13 | 1w | 0d |  | Программист#1 | 40h | 36.77h | 330 | 330 | 307.38 |
| 27 | 5.2 | Тестирование сайта |  | 7.94w | 2022-04-21 14:46 | 2022-07-29 10:58 | 11FS-1w |  |  | 2022-07-12 14:07 | 2022-07-28 15:12 | 2.43w | 1d |  | Ведущий программист; Программист#1; Программист#2; Программист#3; Программист#4 | 480h |  | 3,945.85 | 3,945.85 |  |
| 28 | 6 | **Создание руководства пользователя** |  | 25.68d | 2022-06-24 14:33 | 2022-08-01 11:00 | 20FS-10d |  |  | 2022-06-14 14:33 | 2022-07-07 16:33 | 17.25d | 0d |  |  | 200h |  | 1,040 | 1,010 |  |
| 29 | 6.1 | Написание руководства пользователя |  | 3w | 2022-06-24 14:33 | 2022-07-15 17:33 | 10SS+2d |  |  | 2022-06-16 14:33 | 2022-07-07 16:33 | 3w | 10.31d |  | Технический писатель | 120h |  | 620 | 620 |  |
| 30 | 6.2 | Создание справочной системы |  | 2w | 2022-07-18 09:00 | 2022-08-01 11:00 | 20 |  |  | 2022-07-07 17:33 | 2022-07-22 09:33 | 2w | 0d |  | Технический писатель | 80h |  | 420 | 420 |  |
| 31 | 7 | Сдача сайта в эксплуатацию | milestone | 0w | 2022-08-01 11:00 | 2022-08-01 11:00 | 28 |  |  | 2022-07-28 15:12 | 2022-07-28 15:12 | 0w | 0d |  |  |  |  |  |  |  |
| 32 | 8 | **Совещание** |  | 98.12d | 2022-03-02 09:00 A | 2022-07-27 10:00 |  | 36% | 62.44d | 2022-03-02 09:00 | 2022-07-27 10:00 | 98.12d | 0d |  |  | 121h | 54h | 939 | 1,342 | 460 |
| 33 | 8.1 | Совещание 1 | manual | 1h | 2022-03-02 09:00 A | 2022-03-02 10:00 A |  | 100% |  | 2022-03-02 09:00 | 2022-03-02 10:00 | 1h |  | start no earlier than 2022-03-02 09:00 | 3D аниматор; Web-дизайнер; Ведущий программист; Мультимедиа-корреспондент; Системный аналитик [70%]; Технический писатель; Художник-дизайнер | 7h | 7h | 61 | 61 | 61 |
| 34 | 8.2 | Совещание 2 | manual | 1h | 2022-03-09 09:00 A | 2022-03-09 10:00 A |  | 100% |  | 2022-03-09 09:00 | 2022-03-09 10:00 | 1h |  | start no earlier than 2022-03-09 09:00 | Web-дизайнер; Ведущий программист; Мультимедиа-корреспондент; Системный аналитик; Технический писатель; Художник-дизайнер | 6h | 6h | 53 | 61 | 53 |
| 35 | 8.3 | Совещание 3 | manual | 1h | 2022-03-16 09:00 A | 2022-03-16 10:00 A |  | 100% |  | 2022-03-16 09:00 | 2022-03-16 10:00 | 1h |  | start no earlier than 2022-03-16 09:00 | 3D аниматор; Web-дизайнер; Ведущий программист; Мультимедиа-корреспондент; Системный аналитик; Технический писатель; Художник-дизайнер | 7h | 7h | 61 | 61 | 61 |
| 36 | 8.4 | Совещание 4 | manual | 1h | 2022-03-23 09:00 A | 2022-03-23 10:00 A |  | 100% |  | 2022-03-23 09:00 | 2022-03-23 10:00 | 1h |  | start no earlier than 2022-03-23 09:00 | 3D аниматор; Web-дизайнер; Ведущий программист; Мультимедиа-корреспондент; Системный аналитик; Технический писатель; Художник-дизайнер | 7h | 7h | 61 | 61 | 61 |
| 37 | 8.5 | Совещание 5 | manual | 1h | 2022-03-30 09:00 A | 2022-03-30 10:00 A |  | 100% |  | 2022-03-30 09:00 | 2022-03-30 10:00 | 1h |  | start no earlier than 2022-03-30 09:00 | 3D аниматор; Web-дизайнер; Ведущий программист; Мультимедиа-корреспондент; Системный аналитик; Технический писатель; Художник-дизайнер | 7h | 7h | 61 | 61 | 61 |
| 38 | 8.6 | Совещание 6 | manual | 1h | 2022-04-06 09:00 A | 2022-04-06 10:00 A |  | 100% |  | 2022-04-06 09:00 | 2022-04-06 10:00 | 1h |  | start no earlier than 2022-04-06 09:00 | 3D аниматор; Web-дизайнер; Ведущий программист; Мультимедиа-корреспондент; Системный аналитик; Технический писатель; Художник-дизайнер | 7h | 7h | 61 | 61 | 61 |
| 39 | 8.7 | Совещание 7 | manual | 1h | 2022-04-13 09:00 A | 2022-04-13 10:00 A |  | 100% |  | 2022-04-13 09:00 | 2022-04-13 10:00 | 1h |  | start no earlier than 2022-04-13 09:00 | 3D аниматор; Web-дизайнер; Ведущий программист; Мультимедиа-корреспондент; Системный аналитик; Технический писатель; Художник-дизайнер | 7h | 7h | 61 | 61 | 61 |
| 40 | 8.8 | Совещание 8 | manual | 1h | 2022-04-20 09:00 A | 2022-04-20 10:00 A |  | 100% |  | 2022-04-20 09:00 | 2022-04-20 10:00 | 1h |  | start no earlier than 2022-04-20 09:00 | 3D аниматор; Web-дизайнер; Ведущий программист; Мультимедиа-корреспондент; Технический писатель; Художник-дизайнер | 6h | 6h | 41 | 61 | 41 |
| 41 | 8.9 | Совещание 9 | manual | 1h | 2022-04-27 09:00 | 2022-04-27 10:00 |  |  |  | 2022-04-27 09:00 | 2022-04-27 10:00 | 1h |  | start no earlier than 2022-04-27 09:00 | 3D аниматор; Web-дизайнер; Ведущий программист; Мультимедиа-корреспондент; Технический писатель; Художник-дизайнер | 6h |  | 41 | 61 |  |
| 42 | 8.10 | Совещание 10 | manual | 1h | 2022-05-04 09:00 | 2022-05-04 10:00 |  |  |  | 2022-05-04 09:00 | 2022-05-04 10:00 | 1h |  | start no earlier than 2022-05-04 09:00 | 3D аниматор; Web-дизайнер; Ведущий программист; Мультимедиа-корреспондент; Технический писатель; Художник-дизайнер | 6h |  | 41 | 61 |  |
| 43 | 8.11 | Совещание 11 | manual | 1h | 2022-05-11 09:00 | 2022-05-11 10:00 |  |  |  | 2022-05-11 09:00 | 2022-05-11 10:00 | 1h |  | start no earlier than 2022-05-11 09:00 | 3D аниматор; Web-дизайнер; Ведущий программист; Мультимедиа-корреспондент; Технический писатель; Художник-дизайнер | 6h |  | 41 | 61 |  |
| 44 | 8.12 | Совещание 12 | manual | 1h | 2022-05-18 09:00 | 2022-05-18 10:00 |  |  |  | 2022-05-18 09:00 | 2022-05-18 10:00 | 1h |  | start no earlier than 2022-05-18 09:00 | 3D аниматор; Web-дизайнер; Ведущий программист; Мультимедиа-корреспондент; Технический писатель; Художник-дизайнер | 6h |  | 41 | 61 |  |
| 45 | 8.13 | Совещание 13 | manual | 1h | 2022-05-25 09:00 | 2022-05-25 10:00 |  |  |  | 2022-05-25 09:00 | 2022-05-25 10:00 | 1h |  | start no earlier than 2022-05-25 09:00 | 3D аниматор; Web-дизайнер; Ведущий программист; Мультимедиа-корреспондент; Технический писатель; Художник-дизайнер | 6h |  | 41 | 61 |  |
| 46 | 8.14 | Совещание 14 | manual | 1h | 2022-06-01 09:00 | 2022-06-01 10:00 |  |  |  | 2022-06-01 09:00 | 2022-06-01 10:00 | 1h |  | start no earlier than 2022-06-01 09:00 | 3D аниматор; Web-дизайнер; Ведущий программист; Мультимедиа-корреспондент; Технический писатель; Художник-дизайнер | 6h |  | 41 | 61 |  |
| 47 | 8.15 | Совещание 15 | manual | 1h | 2022-06-08 09:00 | 2022-06-08 10:00 |  |  |  | 2022-06-08 09:00 | 2022-06-08 10:00 | 1h |  | start no earlier than 2022-06-08 09:00 | 3D аниматор; Web-дизайнер; Ведущий программист; Технический писатель; Художник-дизайнер | 5h |  | 38 | 61 |  |
| 48 | 8.16 | Совещание 16 | manual | 1h | 2022-06-15 09:00 | 2022-06-15 10:00 |  |  |  | 2022-06-15 09:00 | 2022-06-15 10:00 | 1h |  | start no earlier than 2022-06-15 09:00 | 3D аниматор; Web-дизайнер; Ведущий программист; Технический писатель; Художник-дизайнер | 5h |  | 38 | 61 |  |
| 49 | 8.17 | Совещание 17 | manual | 1h | 2022-06-22 09:00 | 2022-06-22 10:00 |  |  |  | 2022-06-22 09:00 | 2022-06-22 10:00 | 1h |  | start no earlier than 2022-06-22 09:00 | 3D аниматор; Web-дизайнер; Ведущий программист; Технический писатель; Художник-дизайнер | 5h |  | 38 | 61 |  |
| 50 | 8.18 | Совещание 18 | manual | 1h | 2022-06-29 09:00 | 2022-06-29 10:00 |  |  |  | 2022-06-29 09:00 | 2022-06-29 10:00 | 1h |  | start no earlier than 2022-06-29 09:00 | 3D аниматор; Web-дизайнер; Ведущий программист; Технический писатель; Художник-дизайнер | 5h |  | 38 | 61 |  |
| 51 | 8.19 | Совещание 19 | manual | 1h | 2022-07-06 09:00 | 2022-07-06 10:00 |  |  |  | 2022-07-06 09:00 | 2022-07-06 10:00 | 1h |  | start no earlier than 2022-07-06 09:00 | Web-дизайнер; Ведущий программист; Технический писатель | 3h |  | 22 | 61 |  |
| 52 | 8.20 | Совещание 20 | manual | 1h | 2022-07-13 09:00 | 2022-07-13 10:00 |  |  |  | 2022-07-13 09:00 | 2022-07-13 10:00 | 1h |  | start no earlier than 2022-07-13 09:00 | Web-дизайнер; Ведущий программист; Технический писатель | 3h |  | 22 | 61 |  |
| 53 | 8.21 | Совещание 21 | manual | 1h | 2022-07-20 09:00 | 2022-07-20 10:00 |  |  |  | 2022-07-20 09:00 | 2022-07-20 10:00 | 1h |  | start no earlier than 2022-07-20 09:00 | Web-дизайнер; Ведущий программист; Технический писатель | 3h |  | 22 | 61 |  |
| 54 | 8.22 | Совещание 22 | manual | 1h | 2022-07-27 09:00 | 2022-07-27 10:00 |  |  |  | 2022-07-27 09:00 | 2022-07-27 10:00 | 1h |  | start no earlier than 2022-07-27 09:00 | Ведущий программист; Технический писатель | 2h |  | 15 | 61 |  |
