# РК

Schedule from MS Project, 2022-04-04 to 2022-07-22, status date 2022-06-01, costs in р., A marks actual dates.
Microsoft

## Calendars

- Стандартный: Mon-Fri 09:00-13:00, 14:00-18:00; Sat-Sun off. Exceptions (off unless hours are given): 2022-05-01 to 2022-05-03 (1 Мая), 2022-05-09 to 2022-05-10 (9 Мая), 2022-06-12 to 2022-06-13 (День России).

## Resources

| Resource | Group | Unit | Rate | Cost per use |
| --- | --- | --- | --- | --- |
| Аналитик |  |  | 500 | 5000 |
| Ведущий программист | Программисты |  | 437.5 | 3000 |
| Программист 1 | Программисты |  | 312.5 | 2000 |
| Программист 2 | Программисты |  | 312.5 | 2000 |
| Программист 3 | Программисты |  | 312.5 | 2000 |
| Технический писатель |  |  | 250 | 1500 |
| Наборщики данных | Технический персонал |  | 218.75 | 1000 |
| Сервер базы данных | Оборудование |  | 25000 | 10000 |
| Картриджи для принтера | Расходные материалы | шт. | 2500 |  |
| Бумага | Расходные материалы | пач. | 200 |  |

## Schedule

| ID | WBS | Task | Type | Duration | Start | Finish | Predecessors | Complete | Remaining | Baseline start | Baseline finish | Baseline duration | Total slack | Free slack | Constraint | Resources | Work | Actual work | Cost | Baseline cost | Actual cost |
| --- | --- | --- | --- | --- | --- | --- | --- | --- | --- | --- | --- | --- | --- | --- | --- | --- | --- | --- | --- | --- | --- |
| 1 | 1 | Начало реализации проекта | milestone | 0d | 2022-04-04 08:00 A | 2022-04-04 08:00 A |  | 100% |  | 2022-04-04 08:00 | 2022-04-04 08:00 | 0d |  |  |  |  |  |  |  |  |  |
| 2 | 2 | **Программирование** |  | 37.12d | 2022-04-05 09:00 A | 2022-06-01 09:55 A |  | 100% |  | 2022-04-05 09:00 | 2022-06-01 09:55 | 37.12d |  |  |  | Сервер базы данных | 976h | 976h | 400,577.51 | 389,244.18 | 400,577.51 |
| 3 | 2.1 | Постановка задачи |  | 5d | 2022-04-05 09:00 A | 2022-04-11 18:00 A | 1FS+1d | 100% |  | 2022-04-05 09:00 | 2022-04-11 18:00 | 5d |  |  |  | Аналитик; Ведущий программист | 80h | 80h | 45,500 | 45,500 | 45,500 |
| 4 | 2.2 | Разработка интерфейса |  | 8d | 2022-04-12 09:00 A | 2022-04-21 18:00 A | 3 | 100% |  | 2022-04-12 09:00 | 2022-04-20 15:20 | 6.67d |  |  |  | Ведущий программист; Программист 1; Программист 2 | 192h | 192h | 75,000 | 63,666.67 | 75,000 |
| 5 | 2.3 | Разработка модулей обработки данных |  | 14.82d | 2022-05-06 09:17 A | 2022-05-31 14:06 A | 4 | 100% |  | 2022-05-06 09:17 | 2022-05-31 14:06 | 14.82d |  |  |  | Программист 2; Программист 3; Программист 1 | 240h | 240h | 81,000.01 | 81,000.01 | 81,000.01 |
| 6 | 2.4 | Разработка базы данных |  | 19.37d | 2022-04-12 09:00 A | 2022-05-16 09:55 A | 3 | 100% |  | 2022-04-12 09:00 | 2022-05-16 09:55 | 19.37d |  |  |  | Аналитик; Программист 1; Программист 2; Программист 3 | 368h | 368h | 140,577.5 | 140,577.5 | 140,577.5 |
| 7 | 2.5 | Заполнение базы данных |  | 12d | 2022-05-16 09:55 A | 2022-06-01 09:55 A | 6 | 100% |  | 2022-05-16 09:55 | 2022-06-01 09:55 | 12d |  |  |  | Наборщики данных | 96h | 96h | 22,000 | 22,000 | 22,000 |
| 8 | 3 | Программирование завершено | milestone | 0d | 2022-06-01 09:55 A | 2022-06-01 09:55 A | 5, 7 | 100% |  | 2022-06-01 09:55 | 2022-06-01 09:55 | 0d |  |  |  |  |  |  |  |  |  |
| 9 | 4 | **Тестирование и отладка** |  | 18.33d | 2022-05-30 09:00 A | 2022-06-24 11:39 |  | 20% | 14.61d | 2022-05-30 09:00 | 2022-06-20 11:39 | 14.33d | 20.04d |  |  |  | 320h | 38.58h | 123,269.84 | 123,269.84 | 18,254.69 |
| 10 | 4.1 | Подготовка тестовых наборов данных |  | 6.31d | 2022-05-30 09:00 A | 2022-06-07 11:29 | 8FS-5d | 46% | 3.44d | 2022-05-30 09:00 | 2022-06-07 11:29 | 6.31d | 24.04d | 0d |  | Программист 1; Программист 3; Программист 2 | 80h | 38.58h | 31,000 | 31,000 | 18,054.69 |
| 11 | 4.2 | Тестирование и исправление ошибок |  | 7.85d | 2022-06-14 11:29 | 2022-06-24 11:39 | 10 |  |  | 2022-06-07 11:29 | 2022-06-20 11:39 | 7.85d | 20.04d | 0d | start no earlier than 2022-06-14 11:29 | Ведущий программист; Программист 2; Программист 1; Программист 3 | 240h |  | 91,269.84 | 91,269.84 |  |
| 12 | 5 | Отладка завершена | milestone | 0d | 2022-06-24 11:39 | 2022-06-24 11:39 | 11 |  |  | 2022-06-20 11:39 | 2022-06-20 11:39 | 0d | 20.04d |  |  |  |  |  |  |  |  |
| 13 | 6 | **Разработка документации** |  | 26.26d | 2022-06-16 09:55 | 2022-07-22 12:00 |  |  |  | 2022-06-16 09:55 | 2022-07-22 12:00 | 26.26d | 0d |  |  | Бумага [1 пач.]; Картриджи для принтера [1 шт.] | 200h |  | 55,700 | 55,700 |  |
| 14 | 6.1 | Составление программной документации |  | 10d | 2022-06-16 09:55 | 2022-06-30 12:55 | 8SS+10d |  |  | 2022-06-16 09:55 | 2022-06-30 12:55 | 10d | 0d |  |  | Технический писатель | 80h |  | 21,500 | 21,500 |  |
| 15 | 6.2 | Составление пользовательской документации |  | 15d | 2022-07-01 09:00 | 2022-07-22 12:00 | 14 |  |  | 2022-07-01 09:00 | 2022-07-22 12:00 | 15d | 0d |  |  | Технический писатель | 120h |  | 31,500 | 31,500 |  |
| 16 | 7 | Конец проекта | milestone | 0d | 2022-07-22 12:00 | 2022-07-22 12:00 | 15 |  |  | 2022-07-22 12:00 | 2022-07-22 12:00 | 0d | 0d |  |  |  |  |  |  |  |  |
| 17 | 8 | **Профилактика оборудования** |  | 55.38d | 2022-04-26 09:00 A | 2022-07-19 12:00 |  | 43% | 31.64d | 2022-04-26 09:00 | 2022-07-19 12:00 | 55.38d | 3d |  |  |  | 147h | 63h | 21,000 | 21,000 | 9,000 |
| 18 | 8.1 | Профилактика оборудования 1 |  | 3h | 2022-04-26 09:00 A | 2022-04-26 12:00 A |  | 100% |  | 2022-04-26 09:00 | 2022-04-26 12:00 | 3h |  |  | start no earlier than 2022-04-26 08:00 | Аналитик; Ведущий программист; Наборщики данных; Программист 1; Программист 2; Программист 3; Технический писатель | 21h | 21h | 3,000 | 3,000 | 3,000 |
| 19 | 8.2 | Профилактика оборудования 2 |  | 3h | 2022-05-11 09:00 A | 2022-05-11 12:00 A |  | 100% |  | 2022-05-11 09:00 | 2022-05-11 12:00 | 3h |  |  | start no earlier than 2022-05-10 08:00 | Аналитик; Ведущий программист; Наборщики данных; Программист 1; Программист 2; Программист 3; Технический писатель | 21h | 21h | 3,000 | 3,000 | 3,000 |
| 20 | 8.3 | Профилактика оборудования 3 |  | 3h | 2022-05-24 09:00 A | 2022-05-24 12:00 A |  | 100% |  | 2022-05-24 09:00 | 2022-05-24 12:00 | 3h |  |  | start no earlier than 2022-05-24 08:00 | Аналитик; Ведущий программист; Наборщики данных; Программист 1; Программист 2; Программист 3; Технический писатель | 21h | 21h | 3,000 | 3,000 | 3,000 |
| 21 | 8.4 | Профилактика оборудования 4 |  | 3h | 2022-06-07 09:00 | 2022-06-07 12:00 |  |  |  | 2022-06-07 09:00 | 2022-06-07 12:00 | 3h | 32d |  | start no earlier than 2022-06-07 08:00 | Аналитик; Ведущий программист; Наборщики данных; Программист 1; Программист 2; Программист 3; Технический писатель | 21h |  | 3,000 | 3,000 |  |
| 22 | 8.5 | Профилактика оборудования 5 |  | 3h | 2022-06-21 09:00 | 2022-06-21 12:00 |  |  |  | 2022-06-21 09:00 | 2022-06-21 12:00 | 3h | 23d |  | start no earlier than 2022-06-21 08:00 | Аналитик; Ведущий программист; Наборщики данных; Программист 1; Программист 2; Программист 3; Технический писатель | 21h |  | 3,000 | 3,000 |  |
| 23 | 8.6 | Профилактика оборудования 6 |  | 3h | 2022-07-05 09:00 | 2022-07-05 12:00 |  |  |  | 2022-07-05 09:00 | 2022-07-05 12:00 | 3h | 13d |  | start no earlier than 2022-07-05 08:00 | Аналитик; Ведущий программист; Наборщики данных; Программист 1; Программист 2; Программист 3; Технический писатель | 21h |  | 3,000 | 3,000 |  |
| 24 | 8.7 | Профилактика оборудования 7 |  | 3h | 2022-07-19 09:00 | 2022-07-19 12:00 |  |  |  | 2022-07-19 09:00 | 2022-07-19 12:00 | 3h | 3d |  | start no earlier than 2022-07-19 08:00 | Аналитик; Ведущий программист; Наборщики данных; Программист 1; Программист 2; Программист 3; Технический писатель | 21h |  | 3,000 | 3,000 |  |
